# 机端部署App开发计划

Schedule from a web Gantt chart, 2024-04-29 to 2024-04-29.
Saturdays and Sundays are off

## Schedule

| ID | WBS | Task | Duration | Start | Finish |
| --- | --- | --- | --- | --- | --- |
| 2 | 1 | **需求确认** | 1d | 2024-04-29 | 2024-04-29 |
| 3 | 1.1 | 需求定义 | 1d | 2024-04-29 | 2024-04-29 |
| 4 | 1.2 | 需求评审发布 | 1d | 2024-04-29 | 2024-04-29 |
| 5 | 1.3 | 成熟度定义 | 1d | 2024-04-29 | 2024-04-29 |
| 6 | 2 | **方案设计** | 1d | 2024-04-29 | 2024-04-29 |
| 7 | 2.1 | 系统方案设计 | 1d | 2024-04-29 | 2024-04-29 |
| 8 | 2.2 | 系统方案评审 | 1d | 2024-04-29 | 2024-04-29 |
| 9 | 2.3 | UX方案设计评审 | 1d | 2024-04-29 | 2024-04-29 |
| 10 | 2.4 | 接口定义 | 1d | 2024-04-29 | 2024-04-29 |
| 11 | 3 | **软件开发** | 1d | 2024-04-29 | 2024-04-29 |
| 12 | 3.1 | 代码实现 | 1d | 2024-04-29 | 2024-04-29 |
| 13 | 3.2 | 单元测试 | 1d | 2024-04-29 | 2024-04-29 |
| 14 | 3.3 | 功能联调 | 1d | 2024-04-29 | 2024-04-29 |
| 15 | 3.4 | 版本提测 | 1d | 2024-04-29 | 2024-04-29 |
| 16 | 4 | 集成测试 | 1d | 2024-04-29 | 2024-04-29 |
